# Plan Maestro - Clínica Reina del Cisne

Schedule from MS Project, 2026-07-01 to 2026-11-26, status date 2026-08-21, A marks actual dates.
Desarrollo, validación, despliegue y mantenimiento del sistema clínico
Clínica Reina del Cisne

## Calendars

- Estándar: Mon-Fri 08:00-12:00, 13:00-17:00; Sat-Sun off.

## Resources

| Resource |
| --- |
| Jefe de proyecto |
| Administrador de clínica |
| Médico validador |
| QA / Pruebas |
| Desarrollador Full Stack |
| DevOps / Infraestructura |
| Diseñador UI/UX |
| Recepcionista |

## Schedule

| ID | WBS | Task | Type | Duration | Start | Finish | Predecessors | Complete | Remaining | Total slack | Free slack | Resources | Work |
| --- | --- | --- | --- | --- | --- | --- | --- | --- | --- | --- | --- | --- | --- |
| 1 | 1 | **1. Inicio y definición del proyecto** |  | 7d | 2026-07-01 A | 2026-07-10 |  |  | 7d | 100d |  |  | 136h |
| 2 | 1.1 | Definir objetivos, alcance y usuarios del sistema |  | 2d | 2026-07-01 A | 2026-07-02 |  |  | 2d | 3d | 0d | Jefe de proyecto; Administrador de clínica | 32h |
| 3 | 1.2 | Levantar reglas de citas, pagos e historial clínico |  | 3d | 2026-07-03 A | 2026-07-07 | 2 |  | 3d | 2d | 0d | Jefe de proyecto; Administrador de clínica; Médico validador | 72h |
| 4 | 1.3 | Priorizar módulos y criterios de aceptación |  | 2d | 2026-07-08 A | 2026-07-09 | 3 |  | 2d | 100d |  | Jefe de proyecto; QA / Pruebas | 32h |
| 5 | 1.4 | Hito: alcance aprobado | milestone | 0d | 2026-07-10 A | 2026-07-10 A | 4 | 100% |  |  |  | Jefe de proyecto |  |
| 6 | 2 | **2. Arquitectura y configuración técnica** |  | 9d | 2026-07-13 A | 2026-07-24 |  |  | 9d | 90d |  |  | 112h |
| 7 | 2.1 | Crear proyecto Django y estructura modular |  | 2d | 2026-07-13 A | 2026-07-14 | 5 |  | 2d | 3d | 0d | Desarrollador Full Stack | 16h |
| 8 | 2.2 | Configurar aplicaciones, rutas y plantillas |  | 3d | 2026-07-15 A | 2026-07-17 | 7 |  | 3d | 2d | 0d | Desarrollador Full Stack | 24h |
| 9 | 2.3 | Configurar base de datos y migraciones |  | 3d | 2026-07-15 A | 2026-07-17 | 7 |  | 3d | 2d | 0d | Desarrollador Full Stack | 24h |
| 10 | 2.4 | Configurar variables de entorno y seguridad base |  | 2d | 2026-07-20 A | 2026-07-21 | 8, 9 |  | 2d | 2d | 0d | Desarrollador Full Stack; DevOps / Infraestructura | 32h |
| 11 | 2.5 | Preparar despliegue y dependencias |  | 2d | 2026-07-22 A | 2026-07-23 | 10 |  | 2d | 90d |  | DevOps / Infraestructura | 16h |
| 12 | 2.6 | Hito: arquitectura funcional | milestone | 0d | 2026-07-24 A | 2026-07-24 A | 11 | 100% |  |  |  | Jefe de proyecto |  |
| 13 | 3 | **3. Identidad, usuarios y permisos** |  | 11d | 2026-07-27 A | 2026-08-11 |  |  | 11d | 78d |  |  | 216h |
| 14 | 3.1 | Implementar registro de pacientes |  | 3d | 2026-07-27 A | 2026-07-29 | 12 |  | 3d | 2d | 0d | Desarrollador Full Stack | 24h |
| 15 | 3.2 | Implementar ingreso con correo y contraseña |  | 2d | 2026-07-30 A | 2026-07-31 | 14 |  | 2d | 3d | 0d | Desarrollador Full Stack | 16h |
| 16 | 3.3 | Integrar ingreso con Google |  | 3d | 2026-08-03 A | 2026-08-05 | 15 |  | 3d | 81d |  | Desarrollador Full Stack | 24h |
| 17 | 3.4 | Implementar recuperación segura de contraseña |  | 3d | 2026-08-03 A | 2026-08-05 | 15 |  | 3d | 81d |  | Desarrollador Full Stack | 24h |
| 18 | 3.5 | Crear roles y restricciones de acceso |  | 4d | 2026-07-30 A | 2026-08-04 | 14 |  | 4d | 4d | 0d | Desarrollador Full Stack; QA / Pruebas | 64h |
| 19 | 3.6 | Crear gestión administrativa de usuarios |  | 4d | 2026-08-05 A | 2026-08-10 | 18 |  | 4d | 78d |  | Desarrollador Full Stack; Administrador de clínica | 64h |
| 20 | 3.7 | Hito: identidad y permisos aprobados | milestone | 0d | 2026-08-11 A | 2026-08-11 A | 16, 17, 19 | 100% |  |  |  | Jefe de proyecto |  |
| 21 | 4 | **4. Sitio público e identidad visual** |  | 15d | 2026-07-27 A | 2026-08-17 |  |  | 15d | 74d |  |  | 392h |
| 22 | 4.1 | Diseñar sistema visual, paleta y componentes |  | 4d | 2026-07-27 A | 2026-07-30 | 12 |  | 4d | 3d | 0d | Diseñador UI/UX; Desarrollador Full Stack | 64h |
| 23 | 4.2 | Construir navegación y pie de página responsivos |  | 3d | 2026-07-31 A | 2026-08-04 | 22 |  | 3d | 2d | 0d | Diseñador UI/UX; Desarrollador Full Stack | 48h |
| 24 | 4.3 | Construir página de inicio |  | 3d | 2026-08-05 A | 2026-08-07 | 23 |  | 3d | 5d | 1d | Diseñador UI/UX; Desarrollador Full Stack | 48h |
| 25 | 4.4 | Construir Nosotros con imagen institucional |  | 2d | 2026-08-05 A | 2026-08-06 | 23 |  | 2d | 6d | 2d | Diseñador UI/UX; Desarrollador Full Stack | 32h |
| 26 | 4.5 | Construir Especialidades y Servicios |  | 3d | 2026-08-05 A | 2026-08-07 | 23 |  | 3d | 5d | 1d | Desarrollador Full Stack | 24h |
| 27 | 4.6 | Construir directorio de médicos con fotos y datos |  | 4d | 2026-08-05 A | 2026-08-10 | 23 |  | 4d | 4d | 0d | Desarrollador Full Stack; Administrador de clínica | 64h |
| 28 | 4.7 | Construir página de contacto y aviso de emergencias |  | 3d | 2026-08-05 A | 2026-08-07 | 23 |  | 3d | 5d | 1d | Desarrollador Full Stack; Administrador de clínica | 48h |
| 29 | 4.8 | Optimizar responsividad, sombras y microinteracciones |  | 4d | 2026-08-11 A | 2026-08-14 | 24, 25, 26, 27, 28 |  | 4d | 74d |  | Diseñador UI/UX; Desarrollador Full Stack | 64h |
| 30 | 4.9 | Hito: sitio público aprobado | milestone | 0d | 2026-08-17 A | 2026-08-17 A | 29 | 100% |  |  |  | Jefe de proyecto |  |

Notes:
- 2: Código WBS funcional: 1.1. Responsables: Jefe de proyecto, Administrador de clínica.
- 3: Código WBS funcional: 1.2. Responsables: Jefe de proyecto, Administrador de clínica, Médico validador.
- 4: Código WBS funcional: 1.3. Responsables: Jefe de proyecto, QA / Pruebas.
- 5: Código WBS funcional: 1.4. Responsables: Jefe de proyecto.
- 7: Código WBS funcional: 2.1. Responsables: Desarrollador Full Stack.
- 8: Código WBS funcional: 2.2. Responsables: Desarrollador Full Stack.
- 9: Código WBS funcional: 2.3. Responsables: Desarrollador Full Stack.
- 10: Código WBS funcional: 2.4. Responsables: Desarrollador Full Stack, DevOps / Infraestructura.
- 11: Código WBS funcional: 2.5. Responsables: DevOps / Infraestructura.
- 12: Código WBS funcional: 2.6. Responsables: Jefe de proyecto.
- 14: Código WBS funcional: 3.1. Responsables: Desarrollador Full Stack.
- 15: Código WBS funcional: 3.2. Responsables: Desarrollador Full Stack.
- 16: Código WBS funcional: 3.3. Responsables: Desarrollador Full Stack.
- 17: Código WBS funcional: 3.4. Responsables: Desarrollador Full Stack.
- 18: Código WBS funcional: 3.5. Responsables: Desarrollador Full Stack, QA / Pruebas.
- 19: Código WBS funcional: 3.6. Responsables: Desarrollador Full Stack, Administrador de clínica.
- 20: Código WBS funcional: 3.7. Responsables: Jefe de proyecto.
- 22: Código WBS funcional: 4.1. Responsables: Diseñador UI/UX, Desarrollador Full Stack.
- 23: Código WBS funcional: 4.2. Responsables: Diseñador UI/UX, Desarrollador Full Stack.
- 24: Código WBS funcional: 4.3. Responsables: Diseñador UI/UX, Desarrollador Full Stack.
- 25: Código WBS funcional: 4.4. Responsables: Diseñador UI/UX, Desarrollador Full Stack.
- 26: Código WBS funcional: 4.5. Responsables: Desarrollador Full Stack.
- 27: Código WBS funcional: 4.6. Responsables: Desarrollador Full Stack, Administrador de clínica.
- 28: Código WBS funcional: 4.7. Responsables: Desarrollador Full Stack, Administrador de clínica.
- 29: Código WBS funcional: 4.8. Responsables: Diseñador UI/UX, Desarrollador Full Stack.
- 30: Código WBS funcional: 4.9. Responsables: Jefe de proyecto.

| ID | WBS | Task | Type | Duration | Start | Finish | Predecessors | Complete | Remaining | Total slack | Free slack | Resources | Work |
| --- | --- | --- | --- | --- | --- | --- | --- | --- | --- | --- | --- | --- | --- |
| 31 | 5 | **5. Médicos y especialidades** |  | 12d | 2026-07-27 A | 2026-08-12 |  |  | 12d | 77d |  |  | 216h |
| 32 | 5.1 | Modelar especialidades médicas |  | 2d | 2026-07-27 A | 2026-07-28 | 12 |  | 2d | 3d | 0d | Desarrollador Full Stack | 16h |
| 33 | 5.2 | Crear altas, edición, activación e imágenes de especialidades |  | 4d | 2026-07-29 A | 2026-08-03 | 32 |  | 4d | 83d |  | Desarrollador Full Stack; Administrador de clínica | 64h |
| 34 | 5.3 | Modelar médicos y datos profesionales |  | 3d | 2026-07-29 A | 2026-07-31 | 32 |  | 3d | 4d | 0d | Desarrollador Full Stack | 24h |
| 35 | 5.4 | Crear y editar médicos desde administración |  | 4d | 2026-08-03 A | 2026-08-06 | 34 |  | 4d | 3d | 0d | Desarrollador Full Stack; Administrador de clínica | 64h |
| 36 | 5.5 | Gestionar carga y visualización de fotografías |  | 3d | 2026-08-07 A | 2026-08-11 | 35 |  | 3d | 77d |  | Desarrollador Full Stack; QA / Pruebas | 48h |
| 37 | 5.6 | Hito: catálogo médico operativo | milestone | 0d | 2026-08-12 A | 2026-08-12 A | 33, 36 | 100% |  |  |  | Jefe de proyecto |  |
| 38 | 6 | **6. Citas, recepción y pagos** |  | 15d | 2026-08-13 A | 2026-09-03 |  |  | 15d | 61d |  |  | 456h |
| 39 | 6.1 | Modelar citas, estados y disponibilidad |  | 4d | 2026-08-13 A | 2026-08-18 | 20, 37 |  | 4d | 4d | 0d | Desarrollador Full Stack | 32h |
| 40 | 6.2 | Crear formulario de agendamiento del paciente |  | 4d | 2026-08-19 A | 2026-08-24 | 39 |  | 4d | 3d | 0d | Desarrollador Full Stack; Diseñador UI/UX | 64h |
| 41 | 6.3 | Agregar términos y condiciones obligatorios |  | 3d | 2026-08-25 A | 2026-08-27 | 40 |  | 3d | 65d |  | Desarrollador Full Stack; Administrador de clínica | 48h |
| 42 | 6.4 | Configurar bancos, transferencias y códigos QR |  | 4d | 2026-08-19 A | 2026-08-24 | 39 |  | 4d | 4d | 0d | Desarrollador Full Stack; Administrador de clínica | 64h |
| 43 | 6.5 | Implementar subida y revisión de comprobantes |  | 4d | 2026-08-25 A | 2026-08-28 | 42 |  | 4d | 64d |  | Desarrollador Full Stack; Recepcionista | 64h |
| 44 | 6.6 | Construir panel concreto de recepción |  | 4d | 2026-08-19 A | 2026-08-24 | 39 |  | 4d | 4d | 0d | Diseñador UI/UX; Desarrollador Full Stack; Recepcionista | 96h |
| 45 | 6.7 | Agregar confirmar, cancelar y reagendar citas |  | 4d | 2026-08-25 A | 2026-08-28 | 44 |  | 4d | 3d | 0d | Desarrollador Full Stack; Recepcionista | 64h |
| 46 | 6.8 | Implementar avisos y recordatorios por correo |  | 3d | 2026-08-31 A | 2026-09-02 | 45 |  | 3d | 61d |  | Desarrollador Full Stack | 24h |
| 47 | 6.9 | Hito: ciclo de citas y pagos operativo | milestone | 0d | 2026-09-03 A | 2026-09-03 A | 41, 43, 45, 46 | 100% |  |  |  | Jefe de proyecto |  |
| 48 | 7 | **7. Atención clínica, historiales y recetas** |  | 15d | 2026-09-04 A | 2026-09-25 |  |  | 15d | 45d |  |  | 320h |
| 49 | 7.1 | Crear atención médica y borradores |  | 4d | 2026-09-04 A | 2026-09-09 | 47 |  | 4d | 4d | 0d | Desarrollador Full Stack; Médico validador | 64h |
| 50 | 7.2 | Crear historial clínico por paciente |  | 4d | 2026-09-10 A | 2026-09-15 | 49 |  | 4d | 4d | 0d | Desarrollador Full Stack; Médico validador | 64h |
| 51 | 7.3 | Agregar radiografías y archivos al historial |  | 4d | 2026-09-16 A | 2026-09-21 | 50 |  | 4d | 3d | 0d | Desarrollador Full Stack; Médico validador | 64h |
| 52 | 7.4 | Aplicar permisos de lectura y eliminación de archivos |  | 3d | 2026-09-22 A | 2026-09-24 | 51 |  | 3d | 45d |  | Desarrollador Full Stack; QA / Pruebas | 48h |
| 53 | 7.5 | Crear emisión y descarga de recetas PDF |  | 4d | 2026-09-16 A | 2026-09-21 | 50 |  | 4d | 2d | 0d | Desarrollador Full Stack; Médico validador | 64h |
| 54 | 7.6 | Agregar verificación pública de recetas |  | 2d | 2026-09-22 A | 2026-09-23 | 53 |  | 2d | 46d |  | Desarrollador Full Stack | 16h |
| 55 | 7.7 | Hito: flujo clínico operativo | milestone | 0d | 2026-09-25 A | 2026-09-25 A | 52, 54 | 100% |  |  |  | Jefe de proyecto |  |

Notes:
- 32: Código WBS funcional: 5.1. Responsables: Desarrollador Full Stack.
- 33: Código WBS funcional: 5.2. Responsables: Desarrollador Full Stack, Administrador de clínica.
- 34: Código WBS funcional: 5.3. Responsables: Desarrollador Full Stack.
- 35: Código WBS funcional: 5.4. Responsables: Desarrollador Full Stack, Administrador de clínica.
- 36: Código WBS funcional: 5.5. Responsables: Desarrollador Full Stack, QA / Pruebas.
- 37: Código WBS funcional: 5.6. Responsables: Jefe de proyecto.
- 39: Código WBS funcional: 6.1. Responsables: Desarrollador Full Stack.
- 40: Código WBS funcional: 6.2. Responsables: Desarrollador Full Stack, Diseñador UI/UX.
- 41: Código WBS funcional: 6.3. Responsables: Desarrollador Full Stack, Administrador de clínica.
- 42: Código WBS funcional: 6.4. Responsables: Desarrollador Full Stack, Administrador de clínica.
- 43: Código WBS funcional: 6.5. Responsables: Desarrollador Full Stack, Recepcionista.
- 44: Código WBS funcional: 6.6. Responsables: Diseñador UI/UX, Desarrollador Full Stack, Recepcionista.
- 45: Código WBS funcional: 6.7. Responsables: Desarrollador Full Stack, Recepcionista.
- 46: Código WBS funcional: 6.8. Responsables: Desarrollador Full Stack.
- 47: Código WBS funcional: 6.9. Responsables: Jefe de proyecto.
- 49: Código WBS funcional: 7.1. Responsables: Desarrollador Full Stack, Médico validador.
- 50: Código WBS funcional: 7.2. Responsables: Desarrollador Full Stack, Médico validador.
- 51: Código WBS funcional: 7.3. Responsables: Desarrollador Full Stack, Médico validador.
- 52: Código WBS funcional: 7.4. Responsables: Desarrollador Full Stack, QA / Pruebas.
- 53: Código WBS funcional: 7.5. Responsables: Desarrollador Full Stack, Médico validador.
- 54: Código WBS funcional: 7.6. Responsables: Desarrollador Full Stack.
- 55: Código WBS funcional: 7.7. Responsables: Jefe de proyecto.

| ID | WBS | Task | Type | Duration | Start | Finish | Predecessors | Complete | Remaining | Total slack | Free slack | Resources | Work |
| --- | --- | --- | --- | --- | --- | --- | --- | --- | --- | --- | --- | --- | --- |
| 56 | 8 | **8. Paneles, configuración y reportes** |  | 36d | 2026-08-12 A | 2026-10-01 |  |  | 36d | 41d |  |  | 376h |
| 57 | 8.1 | Construir panel de paciente |  | 3d | 2026-08-12 A | 2026-08-14 | 20 |  | 3d | 74d |  | Desarrollador Full Stack; Diseñador UI/UX | 48h |
| 58 | 8.2 | Construir panel de médico |  | 3d | 2026-09-28 A | 2026-09-30 | 55 |  | 3d | 41d |  | Desarrollador Full Stack; Diseñador UI/UX | 48h |
| 59 | 8.3 | Construir panel administrativo |  | 4d | 2026-08-12 A | 2026-08-17 | 20 |  | 4d | 3d | 0d | Desarrollador Full Stack; Administrador de clínica | 64h |
| 60 | 8.4 | Habilitar configuración de emergencias y contacto |  | 3d | 2026-08-18 A | 2026-08-20 | 59 |  | 3d | 70d |  | Desarrollador Full Stack; Administrador de clínica | 48h |
| 61 | 8.5 | Crear dashboard y reportes con datos reales |  | 5d | 2026-09-04 A | 2026-09-10 | 47, 59 |  | 5d | 3d | 0d | Desarrollador Full Stack; Administrador de clínica; Recepcionista | 120h |
| 62 | 8.6 | Mejorar tablas, indicadores y detalle del período |  | 3d | 2026-09-11 A | 2026-09-15 | 61 |  | 3d | 52d |  | Diseñador UI/UX; Desarrollador Full Stack | 48h |
| 63 | 8.7 | Hito: paneles y reportes aprobados | milestone | 0d | 2026-10-01 A | 2026-10-01 A | 57, 58, 60, 62 | 100% |  |  |  | Jefe de proyecto |  |
| 64 | 9 | **9. Calidad, documentación y estabilización** |  | 43d | 2026-08-12 A | 2026-10-12 |  |  | 43d | 34d |  |  | 256h |
| 65 | 9.1 | Crear pruebas de usuarios y permisos |  | 3d | 2026-08-12 A | 2026-08-14 | 20 |  | 3d | 37d | 36d | QA / Pruebas; Desarrollador Full Stack | 48h |
| 66 | 9.2 | Crear pruebas de citas, pagos y recepción |  | 4d | 2026-09-04 A | 2026-09-09 | 47 |  | 4d | 19d | 18d | QA / Pruebas; Desarrollador Full Stack | 64h |
| 67 | 9.3 | Crear pruebas de historial y recetas |  | 3d | 2026-09-28 A | 2026-09-30 | 55 |  | 3d | 4d | 3d | QA / Pruebas; Desarrollador Full Stack | 48h |
| 68 | 9.4 | Crear pruebas de configuración y reportes |  | 2d | 2026-10-02 A | 2026-10-05 | 63 |  | 2d | 1d | 0d | QA / Pruebas; Desarrollador Full Stack | 32h |
| 69 | 9.5 | Ejecutar suite completa de 63 pruebas |  | 1d | 2026-10-06 A | 2026-10-06 | 65, 66, 67, 68 |  | 1d | 1d | 0d | QA / Pruebas | 8h |
| 70 | 9.6 | Limpiar cachés y revisar archivos sin uso |  | 1d | 2026-10-07 A | 2026-10-07 | 69 |  | 1d | 36d |  | Desarrollador Full Stack | 8h |
| 71 | 9.7 | Elaborar informes funcional y técnico |  | 3d | 2026-10-07 A | 2026-10-09 | 69 |  | 3d | 34d |  | Jefe de proyecto; Desarrollador Full Stack | 48h |
| 72 | 9.8 | Hito: versión funcional estabilizada | milestone | 0d | 2026-10-12 A | 2026-10-12 A | 70, 71 | 100% |  |  |  | Jefe de proyecto |  |
| 73 | 10 | **10. Preparación para producción** |  | 19d | 2026-10-12 | 2026-11-05 |  |  |  | 0d |  |  | 424h |
| 74 | 10.1 | Definir límites y política de archivos clínicos |  | 2d | 2026-10-12 | 2026-10-13 | 72 |  |  | 0d |  | Administrador de clínica; Médico validador; DevOps / Infraestructura | 48h |
| 75 | 10.2 | Configurar almacenamiento privado y respaldos |  | 4d | 2026-10-14 | 2026-10-19 | 74 |  |  | 0d |  | DevOps / Infraestructura | 32h |
| 76 | 10.3 | Revisar HTTPS, cookies, secretos y cabeceras |  | 3d | 2026-10-12 | 2026-10-14 | 72 |  |  | 0d |  | DevOps / Infraestructura; Desarrollador Full Stack | 48h |
| 77 | 10.4 | Configurar dominio, correo y autenticación Google |  | 3d | 2026-10-15 | 2026-10-19 | 76 |  |  | 0d |  | DevOps / Infraestructura | 24h |
| 78 | 10.5 | Migrar y validar base de datos de producción |  | 3d | 2026-10-20 | 2026-10-22 | 75, 77 |  |  | 0d |  | DevOps / Infraestructura; Desarrollador Full Stack | 48h |
| 79 | 10.6 | Pruebas de aceptación con cada rol |  | 4d | 2026-10-23 | 2026-10-28 | 78 |  |  | 0d |  | QA / Pruebas; Administrador de clínica; Recepcionista; Médico validador | 128h |
| 80 | 10.7 | Corregir hallazgos de aceptación |  | 4d | 2026-10-29 | 2026-11-03 | 79 |  |  | 0d |  | Desarrollador Full Stack; Diseñador UI/UX | 64h |
| 81 | 10.8 | Capacitar administrador, recepción y médicos |  | 2d | 2026-11-04 | 2026-11-05 | 80 |  |  | 0d |  | Jefe de proyecto; Administrador de clínica | 32h |
| 82 | 10.9 | Hito: autorización de salida a producción | milestone | 0d | 2026-11-05 | 2026-11-05 | 81 |  |  | 0d |  | Jefe de proyecto; Administrador de clínica |  |

Notes:
- 57: Código WBS funcional: 8.1. Responsables: Desarrollador Full Stack, Diseñador UI/UX.
- 58: Código WBS funcional: 8.2. Responsables: Desarrollador Full Stack, Diseñador UI/UX.
- 59: Código WBS funcional: 8.3. Responsables: Desarrollador Full Stack, Administrador de clínica.
- 60: Código WBS funcional: 8.4. Responsables: Desarrollador Full Stack, Administrador de clínica.
- 61: Código WBS funcional: 8.5. Responsables: Desarrollador Full Stack, Administrador de clínica, Recepcionista.
- 62: Código WBS funcional: 8.6. Responsables: Diseñador UI/UX, Desarrollador Full Stack.
- 63: Código WBS funcional: 8.7. Responsables: Jefe de proyecto.
- 65: Código WBS funcional: 9.1. Responsables: QA / Pruebas, Desarrollador Full Stack.
- 66: Código WBS funcional: 9.2. Responsables: QA / Pruebas, Desarrollador Full Stack.
- 67: Código WBS funcional: 9.3. Responsables: QA / Pruebas, Desarrollador Full Stack.
- 68: Código WBS funcional: 9.4. Responsables: QA / Pruebas, Desarrollador Full Stack.
- 69: Código WBS funcional: 9.5. Responsables: QA / Pruebas.
- 70: Código WBS funcional: 9.6. Responsables: Desarrollador Full Stack.
- 71: Código WBS funcional: 9.7. Responsables: Jefe de proyecto, Desarrollador Full Stack.
- 72: Código WBS funcional: 9.8. Responsables: Jefe de proyecto.
- 74: Código WBS funcional: 10.1. Responsables: Administrador de clínica, Médico validador, DevOps / Infraestructura.
- 75: Código WBS funcional: 10.2. Responsables: DevOps / Infraestructura.
- 76: Código WBS funcional: 10.3. Responsables: DevOps / Infraestructura, Desarrollador Full Stack.
- 77: Código WBS funcional: 10.4. Responsables: DevOps / Infraestructura.
- 78: Código WBS funcional: 10.5. Responsables: DevOps / Infraestructura, Desarrollador Full Stack.
- 79: Código WBS funcional: 10.6. Responsables: QA / Pruebas, Administrador de clínica, Recepcionista, Médico validador.
- 80: Código WBS funcional: 10.7. Responsables: Desarrollador Full Stack, Diseñador UI/UX.
- 81: Código WBS funcional: 10.8. Responsables: Jefe de proyecto, Administrador de clínica.
- 82: Código WBS funcional: 10.9. Responsables: Jefe de proyecto, Administrador de clínica.

| ID | WBS | Task | Type | Duration | Start | Finish | Predecessors | Total slack | Resources | Work |
| --- | --- | --- | --- | --- | --- | --- | --- | --- | --- | --- |
| 83 | 11 | **11. Lanzamiento y operación continua** |  | 15d | 2026-11-06 | 2026-11-26 |  | 0d |  | 288h |
| 84 | 11.1 | Publicar versión de producción |  | 1d | 2026-11-06 | 2026-11-06 | 82 | 0d | DevOps / Infraestructura; Desarrollador Full Stack | 16h |
| 85 | 11.2 | Verificar flujos críticos después del despliegue |  | 1d | 2026-11-09 | 2026-11-09 | 84 | 0d | QA / Pruebas; Recepcionista; Médico validador | 24h |
| 86 | 11.3 | Monitorear errores, correo, pagos y almacenamiento |  | 10d | 2026-11-10 | 2026-11-23 | 85 | 0d | DevOps / Infraestructura; Desarrollador Full Stack | 160h |
| 87 | 11.4 | Revisar copias de seguridad y recuperación |  | 2d | 2026-11-24 | 2026-11-25 | 86 | 1d | DevOps / Infraestructura | 16h |
| 88 | 11.5 | Planificar mejoras de API, auditoría y horarios |  | 3d | 2026-11-24 | 2026-11-26 | 86 | 0d | Jefe de proyecto; Desarrollador Full Stack; Administrador de clínica | 72h |
| 89 | 11.6 | Hito: cierre de lanzamiento | milestone | 0d | 2026-11-26 | 2026-11-26 | 87, 88 | 0d | Jefe de proyecto |  |

Notes:
- 84: Código WBS funcional: 11.1. Responsables: DevOps / Infraestructura, Desarrollador Full Stack.
- 85: Código WBS funcional: 11.2. Responsables: QA / Pruebas, Recepcionista, Médico validador.
- 86: Código WBS funcional: 11.3. Responsables: DevOps / Infraestructura, Desarrollador Full Stack.
- 87: Código WBS funcional: 11.4. Responsables: DevOps / Infraestructura.
- 88: Código WBS funcional: 11.5. Responsables: Jefe de proyecto, Desarrollador Full Stack, Administrador de clínica.
- 89: Código WBS funcional: 11.6. Responsables: Jefe de proyecto.
